# Cronograma

How a schedule from MS Project changed from version to version. A marks actual dates.

## Version 1 (saved 2024-06-03, file Cronograma.mpp)

| ID | WBS | Task | Duration | Start | Finish | Predecessors | Total float |
| --- | --- | --- | --- | --- | --- | --- | --- |
| 1 | 1 | **Projeto: Sistema The Store** | 32.05d? | 2024-05-31 09:00 | 2024-07-16 09:24 |  | 0d |
| 2 | 1.1 | **Prospecção** | 5.08d | 2024-05-31 09:00 | 2024-06-07 09:40 |  | 0d |
| 3 | 1.1.1 | **PTEC** | 3.08d | 2024-05-31 09:00 | 2024-06-05 09:40 |  | 0d |
| 4 |  | Estudar Domínio de Aplicação | 1d | 2024-05-31 09:00 | 2024-05-31 18:00 |  | 0d |
| 5 |  | Reunir-se com Cliente | 0.33d | 2024-06-03 09:00 | 2024-06-03 11:40 | 4 | 0d |
| 6 |  | Redigir PTEC | 1.25d | 2024-06-03 11:40 | 2024-06-04 14:40 | 5 | 0d |
| 7 |  | Revisar PTEC | 0.5d | 2024-06-04 14:40 | 2024-06-05 09:40 | 6 | 0d |
| 8 | 1.1.2 | **Estimativa Preliminar de Tamanho** | 0.5d | 2024-06-05 09:40 | 2024-06-05 14:40 |  | 0d |
| 9 |  | Realizar Estimativa Preliminar de Tamanho | 0.5d | 2024-06-05 09:40 | 2024-06-05 14:40 | 7 | 0d |
| 10 | 1.1.3 | **Cronograma e Orçamento Preliminares** | 1.5d | 2024-06-05 14:40 | 2024-06-07 09:40 |  | 0d |
| 11 |  | Elaborar Cronograma / Orçamento Prel. | 0.5d | 2024-06-05 14:40 | 2024-06-06 09:40 | 9 | 0d |
| 12 |  | Revisar Estimativas de Cronograma e Orçamento Prel. | 1d | 2024-06-06 09:40 | 2024-06-07 09:40 | 11 | 0d |
| 13 | 1.2 | **Análise** | 5.58d | 2024-06-07 09:40 | 2024-06-14 15:20 |  | 0d |
| 14 | 1.2.1 | **Documento de Requisitos** | 3.08d | 2024-06-07 09:40 | 2024-06-12 10:20 |  | 0d |
| 15 |  | Reunir-se com Cliente | 0.33d | 2024-06-07 09:40 | 2024-06-07 13:20 | 12 | 0d |
| 16 |  | Elaborar DRE | 2.25d | 2024-06-07 13:20 | 2024-06-11 15:20 | 15 | 0d |
| 17 |  | Revisar DRE | 0.5d | 2024-06-11 15:20 | 2024-06-12 10:20 | 16 | 0d |
| 18 |  | Submeter DRE para aprovação do cliente | 0d | 2024-06-12 10:20 | 2024-06-12 10:20 | 17 | 0d |
| 19 | 1.2.2 | **MRB** | 2.5d | 2024-06-12 10:20 | 2024-06-14 15:20 |  | 0d |
| 20 |  | Elaborar MRB | 2d | 2024-06-12 10:20 | 2024-06-14 10:20 | 18 | 0d |
| 21 |  | Revisar MRB | 0.5d | 2024-06-14 10:20 | 2024-06-14 15:20 | 20 | 0d |
| 22 | 1.3 | **Projeto** | 4d | 2024-06-14 15:20 | 2024-06-20 15:20 |  | 0d |
| 23 | 1.3.1 | **Diagrama de Classes** | 2.5d | 2024-06-14 15:20 | 2024-06-19 10:20 |  | 0d |
| 24 |  | Elaborar Diagrama de Classes | 0.5d | 2024-06-14 15:20 | 2024-06-17 10:20 | 21 | 0d |
| 25 |  | Revisar Diagrama de Classes | 1d | 2024-06-17 10:20 | 2024-06-18 10:20 | 24 | 0d |
| 26 |  | Atualizar MRB | 1d | 2024-06-18 10:20 | 2024-06-19 10:20 | 25 | 0d |
| 27 | 1.3.2 | **Modelo Entidade Relacionamento** | 1.5d | 2024-06-19 10:20 | 2024-06-20 15:20 |  | 0d |
| 28 |  | Elaborar MER | 0.5d | 2024-06-19 10:20 | 2024-06-19 15:20 | 26 | 0d |
| 29 |  | Revisar MER | 1d | 2024-06-19 15:20 | 2024-06-20 15:20 | 28 | 0d |
| 30 |  | Planejamento | 0.68d | 2024-06-20 15:20 | 2024-06-21 11:44 | 29 | 0d |
| 31 | 1.5 | **Implementação** | 11.96d | 2024-06-21 11:44 | 2024-07-09 11:24 |  | 0d |
| 32 | 1.5.1 | **Release 01** | 5.58d | 2024-06-21 11:44 | 2024-06-28 17:24 |  | 0d |
| 33 | 1.5.1.1 | **Implementação RFC01** | 2d | 2024-06-21 11:44 | 2024-06-25 11:44 |  | 0d |
| 34 |  | Implementar RFS01 | 0.5d | 2024-06-21 11:44 | 2024-06-21 16:44 | 30 | 0d |
| 35 |  | Implementar RFS02 | 0.33d | 2024-06-21 16:44 | 2024-06-24 10:24 | 34 | 0d |
| 36 |  | Implementar RFS03 | 0.33d | 2024-06-24 10:24 | 2024-06-24 14:04 | 35 | 0d |
| 37 |  | Implementar RFS04 | 0.33d | 2024-06-24 14:04 | 2024-06-24 16:44 | 36 | 0d |
| 38 |  | Testar RFC01 | 0.5d | 2024-06-24 16:44 | 2024-06-25 11:44 | 37 | 0d |
| 39 | 1.5.1.2 | **Implementação RFC02** | 3.58d | 2024-06-25 11:44 | 2024-06-28 17:24 |  | 0d |
| 40 |  | Implementar RFS05 | 0.67d | 2024-06-25 11:44 | 2024-06-26 09:04 | 38 | 0d |
| 41 |  | Implementar RFS06 | 0.42d | 2024-06-26 09:04 | 2024-06-26 13:24 | 40 | 0d |
| 42 |  | Implementar RFS07 | 0.33d | 2024-06-26 13:24 | 2024-06-26 16:04 | 41 | 0d |
| 43 |  | Implementar RFS08 | 0.33d | 2024-06-26 16:04 | 2024-06-27 09:44 | 42 | 0d |
| 44 |  | Implementar RFS09 | 0.67d | 2024-06-27 09:44 | 2024-06-27 16:04 | 43 | 0d |
| 45 |  | Implementar RFS10 | 0.67d | 2024-06-27 16:04 | 2024-06-28 13:24 | 44 | 0d |
| 46 |  | Testar RFC02 | 0.5d | 2024-06-28 13:24 | 2024-06-28 17:24 | 45 | 0d |
| 47 | 1.5.2 | **Release 02** | 4.54d | 2024-06-28 17:24 | 2024-07-05 13:44 |  | 0d |
| 48 | 1.5.2.1 | **Implementação RFC03** | 3.33d | 2024-06-28 17:24 | 2024-07-04 11:04 |  | 0d |
| 49 |  | Implementar RFS11 | 0.42d | 2024-06-28 17:24 | 2024-07-01 11:44 | 46 | 0d |
| 50 |  | Implementar RFS12 | 0.38d | 2024-07-01 11:44 | 2024-07-01 15:44 | 49 | 0d |
| 51 |  | Implementar RFS13 | 0.33d | 2024-07-01 15:44 | 2024-07-02 09:24 | 50 | 0d |
| 52 |  | Implementar RFS14 | 0.38d | 2024-07-02 09:24 | 2024-07-02 13:24 | 51 | 0d |
| 53 |  | Implementar RFS15 | 0.67d | 2024-07-02 13:24 | 2024-07-03 09:44 | 52 | 0d |
| 54 |  | Implementar RFS16 | 0.67d | 2024-07-03 09:44 | 2024-07-03 16:04 | 53 | 0d |
| 55 |  | Testar RFC03 | 0.5d | 2024-07-03 16:04 | 2024-07-04 11:04 | 54 | 0d |
| 56 | 1.5.2.2 | **Implementação RFC04** | 1.21d | 2024-07-04 11:04 | 2024-07-05 13:44 |  | 0d |
| 57 |  | Implementar RFS17 | 0.38d | 2024-07-04 11:04 | 2024-07-04 15:04 | 55 | 0d |
| 58 |  | Implementar RFS18 | 0.33d | 2024-07-04 15:04 | 2024-07-04 17:44 | 57 | 0d |
| 59 |  | Testar RFC04 | 0.5d | 2024-07-04 17:44 | 2024-07-05 13:44 | 58 | 0d |
| 60 | 1.5.3 | **Release 03** | 1.83d | 2024-07-05 13:44 | 2024-07-09 11:24 |  | 0d |
| 61 | 1.5.3.1 | **Implementação RFC05** | 1.83d | 2024-07-05 13:44 | 2024-07-09 11:24 |  | 0d |
| 62 |  | Implementar RFS19 | 0.67d | 2024-07-05 13:44 | 2024-07-08 10:04 | 59 | 0d |
| 63 |  | Implementar RFS20 | 0.67d | 2024-07-08 10:04 | 2024-07-08 16:24 | 62 | 0d |
| 64 |  | Testar RFC05 | 0.5d | 2024-07-08 16:24 | 2024-07-09 11:24 | 63 | 0d |
| 65 | 1.6 | **Monitoramento e Controle** | 1.12d | 2024-07-09 11:24 | 2024-07-10 13:24 |  | 0d |
| 66 |  | Acompanhar Projeto | 1.12d | 2024-07-09 11:24 | 2024-07-10 13:24 | 64 | 0d |
| 67 |  | Fase de Fechamento | 1.75d? | 2024-07-10 13:24 | 2024-07-12 10:24 | 66 | 0d |
| 68 |  | Processo de Controle de Mudanças | 1.88d | 2024-07-12 10:24 | 2024-07-16 09:24 | 67 | 0d |

## Version 2 (data date 2024-06-24, saved 2024-06-21, file Cronograma03.mpp)

Note of the change: adição do cronograma atualizado e do teste03 do selenium

Last finish 2024-07-16 → 2024-06-26 (-20d). Complete tasks 0 → 46.

Changed:

| ID | Task | Start | Finish | Duration | Complete | Total float | Other |
| --- | --- | --- | --- | --- | --- | --- | --- |
| 1 | **Projeto: Sistema The Store** | 2024-05-31 09:00 A | 2024-07-16 09:24 → 2024-06-26 14:00 (-20d) | 32.05d? → 18.5d? | 0% → 94% |  | baseline start none → 2024-05-31 09:00; baseline finish none → 2024-07-16 09:24 |
| 2 | **Prospecção** | 2024-05-31 09:00 A | 2024-06-07 09:40 → 2024-06-05 14:40 A (-2d) | 5.08d → 3.58d | 0% → 100% | 0d → none | baseline start none → 2024-05-31 09:00; baseline finish none → 2024-06-07 09:40 |
| 3 | **PTEC** | 2024-05-31 09:00 A | 2024-06-05 09:40 A |  | 0% → 100% | 0d → none | baseline start none → 2024-05-31 09:00; baseline finish none → 2024-06-05 09:40 |
| 4 | Estudar Domínio de Aplicação | 2024-05-31 09:00 A | 2024-05-31 18:00 A |  | 0% → 100% | 0d → none | baseline start none → 2024-05-31 09:00; baseline finish none → 2024-05-31 18:00 |
| 5 | Reunir-se com Cliente | 2024-06-03 09:00 A | 2024-06-03 11:40 A |  | 0% → 100% | 0d → none | baseline start none → 2024-06-03 09:00; baseline finish none → 2024-06-03 11:40 |
| 6 | Redigir PTEC | 2024-06-03 11:40 A | 2024-06-04 14:40 A |  | 0% → 100% | 0d → none | baseline start none → 2024-06-03 11:40; baseline finish none → 2024-06-04 14:40 |
| 7 | Revisar PTEC | 2024-06-04 14:40 A | 2024-06-05 09:40 A |  | 0% → 100% | 0d → none | baseline start none → 2024-06-04 14:40; baseline finish none → 2024-06-05 09:40 |
| 8 | **Estimativa Preliminar de Tamanho** | 2024-06-05 09:40 A | 2024-06-05 14:40 A |  | 0% → 100% | 0d → none | baseline start none → 2024-06-05 09:40; baseline finish none → 2024-06-05 14:40 |
| 9 | Realizar Estimativa Preliminar de Tamanho | 2024-06-05 09:40 A | 2024-06-05 14:40 A |  | 0% → 100% | 0d → none | baseline start none → 2024-06-05 09:40; baseline finish none → 2024-06-05 14:40 |
| 10 | **Cronograma e Orçamento Preliminares** | 2024-06-05 14:40 → 2024-06-01 09:00 A (-4d) | 2024-06-07 09:40 → 2024-06-01 18:00 A (-6d) | 1.5d → 0d | 0% → 100% | 0d → none | baseline start none → 2024-06-05 14:40; baseline finish none → 2024-06-07 09:40 |
| 11 | Elaborar Cronograma / Orçamento Prel. | 2024-06-05 14:40 → 2024-06-01 09:00 A (-4d) | 2024-06-06 09:40 → 2024-06-01 09:00 A (-5d) | 0.5d → 0d | 0% → 100% | 0d → none | baseline start none → 2024-06-05 14:40; baseline finish none → 2024-06-06 09:40 |
| 12 | Revisar Estimativas de Cronograma e Orçamento Prel. | 2024-06-06 09:40 → 2024-06-01 09:00 A (-5d) | 2024-06-07 09:40 → 2024-06-01 18:00 A (-6d) | 1d → 0d | 0% → 100% | 0d → none | baseline start none → 2024-06-06 09:40; baseline finish none → 2024-06-07 09:40 |
| 13 | **Análise** | 2024-06-07 09:40 → 2024-06-01 09:00 A (-6d) | 2024-06-14 15:20 → 2024-06-07 18:00 A (-7d) | 5.58d → 5d | 0% → 100% | 0d → none | baseline start none → 2024-06-07 09:40; baseline finish none → 2024-06-14 15:20 |
| 14 | **Documento de Requisitos** | 2024-06-07 09:40 → 2024-06-01 09:00 A (-6d) | 2024-06-12 10:20 → 2024-06-03 18:00 A (-9d) | 3.08d → 1d | 0% → 100% | 0d → none | baseline start none → 2024-06-07 09:40; baseline finish none → 2024-06-12 10:20 |
| 15 | Reunir-se com Cliente | 2024-06-07 09:40 → 2024-06-01 09:00 A (-6d) | 2024-06-07 13:20 → 2024-06-01 18:00 A (-6d) | 0.33d → 0d | 0% → 100% | 0d → none | baseline start none → 2024-06-07 09:40; baseline finish none → 2024-06-07 13:20 |
| 16 | Elaborar DRE | 2024-06-07 13:20 → 2024-06-01 09:00 A (-6d) | 2024-06-11 15:20 → 2024-06-03 18:00 A (-8d) | 2.25d → 1d | 0% → 100% | 0d → none | baseline start none → 2024-06-07 13:20; baseline finish none → 2024-06-11 15:20 |
| 17 | Revisar DRE | 2024-06-11 15:20 → 2024-06-03 09:00 A (-8d) | 2024-06-12 10:20 → 2024-06-03 14:00 A (-9d) |  | 0% → 100% | 0d → none | baseline start none → 2024-06-11 15:20; baseline finish none → 2024-06-12 10:20 |
| 18 | Submeter DRE para aprovação do cliente | 2024-06-12 10:20 → 2024-06-03 09:00 A (-9d) | 2024-06-12 10:20 → 2024-06-03 09:00 A (-9d) |  | 0% → 100% | 0d → none | baseline start none → 2024-06-12 10:20; baseline finish none → 2024-06-12 10:20 |
| 19 | **MRB** | 2024-06-12 10:20 → 2024-06-03 09:00 A (-9d) | 2024-06-14 15:20 → 2024-06-07 18:00 A (-7d) | 2.5d → 5d | 0% → 100% | 0d → none | baseline start none → 2024-06-12 10:20; baseline finish none → 2024-06-14 15:20 |
| 20 | Elaborar MRB | 2024-06-12 10:20 → 2024-06-03 09:00 A (-9d) | 2024-06-14 10:20 → 2024-06-07 18:00 A (-7d) | 2d → 5d | 0% → 100% | 0d → none | baseline start none → 2024-06-12 10:20; baseline finish none → 2024-06-14 10:20 |
| 21 | Revisar MRB | 2024-06-14 10:20 → 2024-06-07 09:00 A (-7d) | 2024-06-14 15:20 → 2024-06-07 14:00 A (-7d) |  | 0% → 100% | 0d → none | baseline start none → 2024-06-14 10:20; baseline finish none → 2024-06-14 15:20 |
| 22 | **Projeto** | 2024-06-14 15:20 → 2024-06-10 09:00 A (-4d) | 2024-06-20 15:20 → 2024-06-11 18:00 A (-9d) | 4d → 2d | 0% → 100% | 0d → none | baseline start none → 2024-06-14 15:20; baseline finish none → 2024-06-20 15:20 |
| 23 | **Diagrama de Classes** | 2024-06-14 15:20 → 2024-06-10 09:00 A (-4d) | 2024-06-19 10:20 → 2024-06-11 18:00 A (-8d) | 2.5d → 2d | 0% → 100% | 0d → none | baseline start none → 2024-06-14 15:20; baseline finish none → 2024-06-19 10:20 |
| 24 | Elaborar Diagrama de Classes | 2024-06-14 15:20 → 2024-06-10 09:00 A (-4d) | 2024-06-17 10:20 → 2024-06-10 14:00 A (-7d) |  | 0% → 100% | 0d → none | baseline start none → 2024-06-14 15:20; baseline finish none → 2024-06-17 10:20 |
| 25 | Revisar Diagrama de Classes | 2024-06-17 10:20 → 2024-06-10 09:00 A (-7d) | 2024-06-18 10:20 → 2024-06-10 18:00 A (-8d) |  | 0% → 100% | 0d → none | baseline start none → 2024-06-17 10:20; baseline finish none → 2024-06-18 10:20 |
| 26 | Atualizar MRB | 2024-06-18 10:20 → 2024-06-11 09:00 A (-7d) | 2024-06-19 10:20 → 2024-06-11 18:00 A (-8d) |  | 0% → 100% | 0d → none | baseline start none → 2024-06-18 10:20; baseline finish none → 2024-06-19 10:20 |
| 27 | **Modelo Entidade Relacionamento** | 2024-06-19 10:20 → 2024-06-11 09:00 A (-8d) | 2024-06-20 15:20 → 2024-06-11 18:00 A (-9d) | 1.5d → 1d | 0% → 100% | 0d → none | baseline start none → 2024-06-19 10:20; baseline finish none → 2024-06-20 15:20 |
| 28 | Elaborar MER | 2024-06-19 10:20 → 2024-06-11 09:00 A (-8d) | 2024-06-19 15:20 → 2024-06-11 14:00 A (-8d) |  | 0% → 100% | 0d → none | baseline start none → 2024-06-19 10:20; baseline finish none → 2024-06-19 15:20 |
| 29 | Revisar MER | 2024-06-19 15:20 → 2024-06-11 09:00 A (-8d) | 2024-06-20 15:20 → 2024-06-11 18:00 A (-9d) |  | 0% → 100% | 0d → none | baseline start none → 2024-06-19 15:20; baseline finish none → 2024-06-20 15:20 |
| 30 | Planejamento | 2024-06-20 15:20 → 2024-06-12 09:00 A (-8d) | 2024-06-21 11:44 → 2024-06-12 15:24 A (-9d) |  | 0% → 100% | 0d → none | baseline start none → 2024-06-20 15:20; baseline finish none → 2024-06-21 11:44 |
| 31 | **Implementação** | 2024-06-21 11:44 → 2024-06-11 09:00 A (-10d) | 2024-07-09 11:24 → 2024-06-21 12:00 A (-18d) | 11.96d → 8.38d | 0% → 100% | 0d → none | baseline start none → 2024-06-21 11:44; baseline finish none → 2024-07-09 11:24 |
| 32 | **Release 01** | 2024-06-21 11:44 → 2024-06-11 09:00 A (-10d) | 2024-06-28 17:24 → 2024-06-12 18:00 A (-16d) | 5.58d → 2d | 0% → 100% | 0d → none | baseline start none → 2024-06-21 11:44; baseline finish none → 2024-06-28 17:24 |
| 33 | **Implementação RFC01** | 2024-06-21 11:44 → 2024-06-11 09:00 A (-10d) | 2024-06-25 11:44 → 2024-06-12 18:00 A (-13d) |  | 0% → 100% | 0d → none | baseline start none → 2024-06-21 11:44; baseline finish none → 2024-06-25 11:44 |
| 34 | Implementar RFS01 | 2024-06-21 11:44 → 2024-06-11 09:00 A (-10d) | 2024-06-21 16:44 → 2024-06-12 18:00 A (-9d) | 0.5d → 0.33d | 0% → 100% | 0d → none | baseline start none → 2024-06-21 11:44; baseline finish none → 2024-06-21 16:44 |
| 35 | Implementar RFS02 | 2024-06-21 16:44 → 2024-06-11 09:00 A (-10d) | 2024-06-24 10:24 → 2024-06-12 18:00 A (-12d) | 0.33d → 0d | 0% → 100% | 0d → none | baseline start none → 2024-06-21 16:44; baseline finish none → 2024-06-24 10:24 |
| 36 | Implementar RFS03 | 2024-06-24 10:24 → 2024-06-11 09:00 A (-13d) | 2024-06-24 14:04 → 2024-06-12 18:00 A (-12d) | 0.33d → 0d | 0% → 100% | 0d → none | baseline start none → 2024-06-24 10:24; baseline finish none → 2024-06-24 14:04 |
| 37 | Implementar RFS04 | 2024-06-24 14:04 → 2024-06-11 09:00 A (-13d) | 2024-06-24 16:44 → 2024-06-12 18:00 A (-12d) | 0.33d → 0d | 0% → 100% | 0d → none | baseline start none → 2024-06-24 14:04; baseline finish none → 2024-06-24 16:44 |
| 38 | Testar RFC01 | 2024-06-24 16:44 → 2024-06-11 09:00 A (-13d) | 2024-06-25 11:44 → 2024-06-12 18:00 A (-13d) | 0.5d → 0d | 0% → 100% | 0d → none | baseline start none → 2024-06-24 16:44; baseline finish none → 2024-06-25 11:44 |
| 39 | **Implementação RFC02** | 2024-06-25 11:44 → 2024-06-11 09:00 A (-14d) | 2024-06-28 17:24 → 2024-06-12 18:00 A (-16d) | 3.58d → 2d | 0% → 100% | 0d → none | baseline start none → 2024-06-25 11:44; baseline finish none → 2024-06-28 17:24 |
| 40 | Implementar RFS05 | 2024-06-25 11:44 → 2024-06-11 09:00 A (-14d) | 2024-06-26 09:04 → 2024-06-12 18:00 A (-14d) | 0.67d → 0d | 0% → 100% | 0d → none | baseline start none → 2024-06-25 11:44; baseline finish none → 2024-06-26 09:04 |
| 41 | Implementar RFS06 | 2024-06-26 09:04 → 2024-06-11 09:00 A (-15d) | 2024-06-26 13:24 → 2024-06-12 18:00 A (-14d) | 0.42d → 0d | 0% → 100% | 0d → none | baseline start none → 2024-06-26 09:04; baseline finish none → 2024-06-26 13:24 |
| 42 | Implementar RFS07 | 2024-06-26 13:24 → 2024-06-11 09:00 A (-15d) | 2024-06-26 16:04 → 2024-06-12 18:00 A (-14d) | 0.33d → 0d | 0% → 100% | 0d → none | baseline start none → 2024-06-26 13:24; baseline finish none → 2024-06-26 16:04 |
| 43 | Implementar RFS08 | 2024-06-26 16:04 → 2024-06-11 09:00 A (-15d) | 2024-06-27 09:44 → 2024-06-12 18:00 A (-15d) | 0.33d → 0d | 0% → 100% | 0d → none | baseline start none → 2024-06-26 16:04; baseline finish none → 2024-06-27 09:44 |
| 44 | Implementar RFS09 | 2024-06-27 09:44 → 2024-06-11 09:00 A (-16d) | 2024-06-27 16:04 → 2024-06-12 18:00 A (-15d) | 0.67d → 0d | 0% → 100% | 0d → none | baseline start none → 2024-06-27 09:44; baseline finish none → 2024-06-27 16:04 |
| 45 | Implementar RFS10 | 2024-06-27 16:04 → 2024-06-11 09:00 A (-16d) | 2024-06-28 13:24 → 2024-06-12 18:00 A (-16d) | 0.67d → 0d | 0% → 100% | 0d → none | baseline start none → 2024-06-27 16:04; baseline finish none → 2024-06-28 13:24 |
| 46 | Testar RFC02 | 2024-06-28 13:24 → 2024-06-11 09:00 A (-17d) | 2024-06-28 17:24 → 2024-06-12 18:00 A (-16d) | 0.5d → 0d | 0% → 100% | 0d → none | baseline start none → 2024-06-28 13:24; baseline finish none → 2024-06-28 17:24 |
| 47 | **Release 02** | 2024-06-28 17:24 → 2024-06-13 09:00 A (-15d) | 2024-07-05 13:44 → 2024-06-19 14:20 A (-16d) |  | 0% → 100% | 0d → none | baseline start none → 2024-06-28 17:24; baseline finish none → 2024-07-05 13:44 |
| 48 | **Implementação RFC03** | 2024-06-28 17:24 → 2024-06-13 09:00 A (-15d) | 2024-07-04 11:04 → 2024-06-18 11:40 A (-16d) |  | 0% → 100% | 0d → none | baseline start none → 2024-06-28 17:24; baseline finish none → 2024-07-04 11:04 |
| 49 | Implementar RFS11 | 2024-06-28 17:24 → 2024-06-13 09:00 A (-15d) | 2024-07-01 11:44 → 2024-06-13 13:20 A (-18d) |  | 0% → 100% | 0d → none | baseline start none → 2024-06-28 17:24; baseline finish none → 2024-07-01 11:44 |
| 50 | Implementar RFS12 | 2024-07-01 11:44 → 2024-06-13 13:20 A (-18d) | 2024-07-01 15:44 → 2024-06-13 16:20 A (-18d) |  | 0% → 100% | 0d → none | baseline start none → 2024-07-01 11:44; baseline finish none → 2024-07-01 15:44 |
| 51 | Implementar RFS13 | 2024-07-01 15:44 → 2024-06-13 16:20 A (-18d) | 2024-07-02 09:24 → 2024-06-14 10:00 A (-18d) |  | 0% → 100% | 0d → none | baseline start none → 2024-07-01 15:44; baseline finish none → 2024-07-02 09:24 |
| 52 | Implementar RFS14 | 2024-07-02 09:24 → 2024-06-14 10:00 A (-18d) | 2024-07-02 13:24 → 2024-06-14 14:00 A (-18d) |  | 0% → 100% | 0d → none | baseline start none → 2024-07-02 09:24; baseline finish none → 2024-07-02 13:24 |
| 53 | Implementar RFS15 | 2024-07-02 13:24 → 2024-06-14 14:00 A (-18d) | 2024-07-03 09:44 → 2024-06-17 10:20 A (-16d) |  | 0% → 100% | 0d → none | baseline start none → 2024-07-02 13:24; baseline finish none → 2024-07-03 09:44 |
| 54 | Implementar RFS16 | 2024-07-03 09:44 → 2024-06-17 10:20 A (-16d) | 2024-07-03 16:04 → 2024-06-17 16:40 A (-16d) |  | 0% → 100% | 0d → none | baseline start none → 2024-07-03 09:44; baseline finish none → 2024-07-03 16:04 |
| 55 | Testar RFC03 | 2024-07-03 16:04 → 2024-06-17 16:40 A (-16d) | 2024-07-04 11:04 → 2024-06-18 11:40 A (-16d) |  | 0% → 100% | 0d → none | baseline start none → 2024-07-03 16:04; baseline finish none → 2024-07-04 11:04 |
| 56 | **Implementação RFC04** | 2024-07-04 11:04 → 2024-06-18 11:40 A (-16d) | 2024-07-05 13:44 → 2024-06-19 14:20 A (-16d) |  | 0% → 100% | 0d → none | baseline start none → 2024-07-04 11:04; baseline finish none → 2024-07-05 13:44 |
| 57 | Implementar RFS17 | 2024-07-04 11:04 → 2024-06-18 11:40 A (-16d) | 2024-07-04 15:04 → 2024-06-18 15:40 A (-16d) |  | 0% → 100% | 0d → none | baseline start none → 2024-07-04 11:04; baseline finish none → 2024-07-04 15:04 |
| 58 | Implementar RFS18 | 2024-07-04 15:04 → 2024-06-18 15:40 A (-16d) | 2024-07-04 17:44 → 2024-06-19 09:20 A (-15d) |  | 0% → 100% | 0d → none | baseline start none → 2024-07-04 15:04; baseline finish none → 2024-07-04 17:44 |
| 59 | Testar RFC04 | 2024-07-04 17:44 → 2024-06-19 09:20 A (-15d) | 2024-07-05 13:44 → 2024-06-19 14:20 A (-16d) |  | 0% → 100% | 0d → none | baseline start none → 2024-07-04 17:44; baseline finish none → 2024-07-05 13:44 |
| 60 | **Release 03** | 2024-07-05 13:44 → 2024-06-19 14:20 A (-16d) | 2024-07-09 11:24 → 2024-06-21 12:00 A (-18d) |  | 0% → 100% | 0d → none | baseline start none → 2024-07-05 13:44; baseline finish none → 2024-07-09 11:24 |
| 61 | **Implementação RFC05** | 2024-07-05 13:44 → 2024-06-19 14:20 A (-16d) | 2024-07-09 11:24 → 2024-06-21 12:00 A (-18d) |  | 0% → 100% | 0d → none | baseline start none → 2024-07-05 13:44; baseline finish none → 2024-07-09 11:24 |
| 62 | Implementar RFS19 | 2024-07-05 13:44 → 2024-06-19 14:20 A (-16d) | 2024-07-08 10:04 → 2024-06-20 10:40 A (-18d) |  | 0% → 100% | 0d → none | baseline start none → 2024-07-05 13:44; baseline finish none → 2024-07-08 10:04 |
| 63 | Implementar RFS20 | 2024-07-08 10:04 → 2024-06-20 10:40 A (-18d) | 2024-07-08 16:24 → 2024-06-20 17:00 A (-18d) |  | 0% → 100% | 0d → none | baseline start none → 2024-07-08 10:04; baseline finish none → 2024-07-08 16:24 |
| 64 | Testar RFC05 | 2024-07-08 16:24 → 2024-06-20 17:00 A (-18d) | 2024-07-09 11:24 → 2024-06-21 12:00 A (-18d) |  | 0% → 100% | 0d → none | baseline start none → 2024-07-08 16:24; baseline finish none → 2024-07-09 11:24 |
| 65 | **Monitoramento e Controle** | 2024-07-09 11:24 → 2024-06-21 13:00 A (-18d) | 2024-07-10 13:24 → 2024-06-24 14:00 A (-16d) |  | 0% → 100% | 0d → none | baseline start none → 2024-07-09 11:24; baseline finish none → 2024-07-10 13:24 |
| 66 | Acompanhar Projeto | 2024-07-09 11:24 → 2024-06-21 13:00 A (-18d) | 2024-07-10 13:24 → 2024-06-24 14:00 A (-16d) |  | 0% → 100% | 0d → none | baseline start none → 2024-07-09 11:24; baseline finish none → 2024-07-10 13:24 |
| 67 | Fase de Fechamento | 2024-07-10 13:24 → 2024-06-24 14:00 A (-16d) | 2024-07-12 10:24 → 2024-06-24 18:00 A (-18d) | 1.75d? → 0.5d? | 0% → 100% | 0d → none | baseline start none → 2024-07-10 13:24; baseline finish none → 2024-07-12 10:24 |
| 68 | Processo de Controle de Mudanças | 2024-07-12 10:24 → 2024-06-25 09:00 (-17d) | 2024-07-16 09:24 → 2024-06-26 14:00 (-20d) | 1.88d → 1.5d |  |  | baseline start none → 2024-07-12 10:24; baseline finish none → 2024-07-16 09:24 |
